# Plan de trabajo TOM_IMS_28-10-2015

Schedule from MS Project, 2015-11-16 to 2016-11-17, A marks actual dates.

## Calendars

- Estándar: Mon-Fri 09:00-13:00, 15:00-19:00; Sat-Sun off.

## Schedule

| ID | WBS | Task | Duration | Start | Finish | Predecessors | Complete | Remaining | Total slack | Free slack |
| --- | --- | --- | --- | --- | --- | --- | --- | --- | --- | --- |
| 1 | 1 | **Plan de trabajo TOM_IMS** | 264d? | 2015-11-16 A | 2016-11-17 |  | 32% | 179.36d? | 0d |  |
| 2 | 1.1 | **Análisis y diseño** | 20d | 2015-11-16 A | 2015-12-11 |  | 40% | 12d | 244d |  |
| 3 | 1.1.1 | Procesos | 10d | 2015-11-16 | 2015-11-27 |  |  |  | 8d | 0d |
| 4 | 1.1.2 | Base de datos | 10d | 2015-11-30 A | 2015-12-11 | 3 | 80% | 2d | 244d |  |
| 5 | 1.2 | **Aplicación BOF** | 207d? | 2015-11-16 A | 2016-08-30 |  | 41% | 122.69d? | 57d |  |
| 6 | 1.2.1 | Login | 2d | 2015-12-14 A | 2015-12-15 A | 4 | 100% |  |  |  |
| 7 | 1.2.2 | Menu de la aplicación | 3d | 2015-12-16 A | 2015-12-18 | 6 | 80% | 0.6d | 237d | 0d |
| 8 | 1.2.3 | Parametrización de permisos | 2d | 2015-12-21 | 2015-12-22 | 7 |  |  | 237d |  |
| 9 | 1.2.4 | **Catálogos** | 123d? | 2015-11-16 A | 2016-05-04 |  | 72% | 34.17d? | 141d |  |
| 10 | 1.2.4.1 | **Empresa y sucursal** | 8d | 2015-12-23 A | 2016-01-01 |  | 63% | 3d | 223d |  |
| 11 | 1.2.4.1.1 | Paises | 2d | 2015-12-23 A | 2015-12-24 A | 8 | 100% |  |  |  |
| 12 | 1.2.4.1.2 | Empresa | 3d | 2015-12-25 A | 2015-12-29 A | 11 | 100% |  |  |  |
| 13 | 1.2.4.1.3 | Sucursales | 3d | 2015-12-30 | 2016-01-01 | 12 |  |  | 223d | 0d |
| 14 | 1.2.4.2 | **Logistica** | 11d | 2016-01-04 A | 2016-01-18 |  | 45% | 6d | 218d |  |
| 15 | 1.2.4.2.1 | Montacargas | 2d | 2016-01-04 | 2016-01-05 | 13 |  |  | 223d | 0d |
| 16 | 1.2.4.2.2 | Servicios de montacarga | 4d | 2016-01-06 | 2016-01-11 | 15 |  |  | 223d |  |
| 17 | 1.2.4.2.3 | Empresa_Transporte | 2d | 2016-01-12 A | 2016-01-13 A | 16 | 100% |  |  |  |
| 18 | 1.2.4.2.4 | Empresa_Transporte_Bodega | 1d | 2016-01-14 A | 2016-01-14 A | 17 | 100% |  |  |  |
| 19 | 1.2.4.2.5 | Empresa_Transporte_Vehiculos | 1d | 2016-01-15 A | 2016-01-15 A | 18 | 100% |  |  |  |
| 20 | 1.2.4.2.6 | Empresa_Transporte_Pilotos | 1d | 2016-01-18 A | 2016-01-18 A | 19 | 100% |  |  |  |
| 21 | 1.2.4.3 | **Ubicación** | 57d? | 2015-11-16 A | 2016-02-02 |  | 57% | 24.43d? | 207d |  |
| 22 | 1.2.4.3.1 | Bodega | 3d | 2016-01-19 A | 2016-01-21 A | 20 | 100% |  |  |  |
| 23 | 1.2.4.3.2 | Muelles | 2d | 2016-01-22 A | 2016-01-25 A | 22 | 100% |  |  |  |
| 24 | 1.2.4.3.3 | Area | 1d | 2016-01-26 | 2016-01-26 | 23 |  |  | 207d | 0d |
| 25 | 1.2.4.3.4 | Sector | 1d | 2016-01-27 | 2016-01-27 | 24 |  |  | 207d | 0d |
| 26 | 1.2.4.3.5 | Tramo | 1d | 2016-01-28 | 2016-01-28 | 25 |  |  | 207d | 0d |
| 27 | 1.2.4.3.6 | Ubicación | 3d | 2016-01-29 | 2016-02-02 | 26 |  |  | 207d |  |
| 28 | 1.2.4.3.7 | Jornada Laboral | 1d | 2015-11-16 A | 2015-11-16 A |  | 100% |  |  |  |
| 29 | 1.2.4.3.8 | Horario Laboral | 1d? | 2015-11-16 A | 2015-11-16 A |  | 100% |  |  |  |
| 30 | 1.2.4.3.9 | Turno | 1d? | 2015-11-16 A | 2015-11-16 A |  | 100% |  |  |  |

| ID | WBS | Task | Duration | Start | Finish | Predecessors | Complete | Remaining | Total slack | Free slack |
| --- | --- | --- | --- | --- | --- | --- | --- | --- | --- | --- |
| 31 | 1.2.4.4 | **Propietarios y clientes** | 14d | 2016-02-03 A | 2016-02-22 A |  | 100% |  |  |  |
| 32 | 1.2.4.4.1 | Propietarios | 2d | 2016-02-03 A | 2016-02-04 A | 27 | 100% |  |  |  |
| 33 | 1.2.4.4.2 | Clientes | 5d | 2016-02-05 A | 2016-02-11 A | 32 | 100% |  |  |  |
| 34 | 1.2.4.4.3 | Proveedores | 2d | 2016-02-12 A | 2016-02-15 A | 33 | 100% |  |  |  |
| 35 | 1.2.4.4.4 | Proveedor_Bodega | 1d | 2016-02-16 A | 2016-02-16 A | 34 | 100% |  |  |  |
| 36 | 1.2.4.4.5 | Cliente_Tipo | 1d | 2016-02-17 A | 2016-02-17 A | 35 | 100% |  |  |  |
| 37 | 1.2.4.4.6 | Clientes_Bodega | 1d | 2016-02-18 A | 2016-02-18 A | 36 | 100% |  |  |  |
| 38 | 1.2.4.4.7 | Clientes_Tiempos | 2d | 2016-02-19 A | 2016-02-22 A | 37 | 100% |  |  |  |
| 39 | 1.2.4.5 | **Motivos** | 6d | 2016-02-23 A | 2016-03-01 A |  | 100% |  |  |  |
| 40 | 1.2.4.5.1 | Motivo_Anulacion | 1d | 2016-02-23 A | 2016-02-23 A | 38 | 100% |  |  |  |
| 41 | 1.2.4.5.2 | Motivo_Devolucion | 1d | 2016-02-24 A | 2016-02-24 A | 40 | 100% |  |  |  |
| 42 | 1.2.4.5.3 | Motivo_Devolucion_Bodega | 2d | 2016-02-25 A | 2016-02-26 A | 41 | 100% |  |  |  |
| 43 | 1.2.4.5.4 | Motivo_Anulacion_Bodega | 2d | 2016-02-29 A | 2016-03-01 A | 42 | 100% |  |  |  |
| 44 | 1.2.4.6 | **Operadores HH** | 3d | 2016-03-02 | 2016-03-04 |  |  |  | 184d |  |
| 45 | 1.2.4.6.1 | Operador | 2d | 2016-03-02 | 2016-03-03 | 43 |  |  | 184d | 0d |
| 46 | 1.2.4.6.2 | Operador_Bodega | 1d | 2016-03-04 | 2016-03-04 | 45 |  |  | 184d |  |
| 47 | 1.2.4.7 | **Producto** | 34d | 2016-03-07 A | 2016-04-21 |  | 94% | 2d | 150d |  |
| 48 | 1.2.4.7.1 | Producto | 8d | 2016-03-07 A | 2016-03-16 A | 46 | 100% |  |  |  |
| 49 | 1.2.4.7.2 | Producto_Bodega | 2d | 2016-03-17 A | 2016-03-18 A | 48 | 100% |  |  |  |
| 50 | 1.2.4.7.3 | Producto_Clasificacion | 2d | 2016-03-21 A | 2016-03-22 A | 49 | 100% |  |  |  |
| 51 | 1.2.4.7.4 | Producto_Codigos_Barra | 2d | 2016-03-23 A | 2016-03-24 A | 50 | 100% |  |  |  |
| 52 | 1.2.4.7.5 | Producto_Estado | 2d | 2016-03-25 A | 2016-03-28 A | 51 | 100% |  |  |  |
| 53 | 1.2.4.7.6 | Producto_Estado_Bodega | 1d | 2016-03-29 A | 2016-03-29 A | 52 | 100% |  |  |  |
| 54 | 1.2.4.7.7 | Producto_Familia | 2d | 2016-03-30 A | 2016-03-31 A | 53 | 100% |  |  |  |
| 55 | 1.2.4.7.8 | Producto_Marca | 2d | 2016-04-01 A | 2016-04-04 A | 54 | 100% |  |  |  |
| 56 | 1.2.4.7.9 | Producto_Pallet | 2d | 2016-04-05 | 2016-04-06 | 55 |  |  | 161d |  |
| 57 | 1.2.4.7.10 | Producto_Parametros | 4d | 2016-04-07 A | 2016-04-12 A | 56 | 100% |  |  |  |
| 58 | 1.2.4.7.11 | Producto_Presentación | 3d | 2016-04-13 A | 2016-04-15 A | 57 | 100% |  |  |  |
| 59 | 1.2.4.7.12 | Producto_Tipo | 2d | 2016-04-18 A | 2016-04-19 A | 58 | 100% |  |  |  |
| 60 | 1.2.4.7.13 | Producto_Unidad_Medida | 2d | 2016-04-20 A | 2016-04-21 A | 59 | 100% |  |  |  |

| ID | WBS | Task | Duration | Start | Finish | Predecessors | Complete | Remaining | Total slack | Free slack |
| --- | --- | --- | --- | --- | --- | --- | --- | --- | --- | --- |
| 61 | 1.2.4.8 | **Roles, usuarios y permisos** | 9d | 2016-04-22 A | 2016-05-04 |  | 17% | 7.5d | 0d |  |
| 62 | 1.2.4.8.1 | Rol | 2d | 2016-04-22 | 2016-04-25 | 60 |  |  | 1.5d | 0d |
| 63 | 1.2.4.8.2 | Rol_Bodega | 1d | 2016-04-26 | 2016-04-26 | 62 |  |  | 1.5d | 0d |
| 64 | 1.2.4.8.3 | Rol_Menu | 3d | 2016-04-27 | 2016-04-29 | 63 |  |  | 1.5d | 0d |
| 65 | 1.2.4.8.4 | Usuario | 2d | 2016-05-02 A | 2016-05-03 | 64 | 75% | 0.5d | 0d |  |
| 66 | 1.2.4.8.5 | Usuario_Bodega | 1d | 2016-05-04 | 2016-05-04 | 65 |  |  | 0d |  |
| 67 | 1.2.5 | **Procesos BOF** | 84d | 2016-05-05 | 2016-08-30 |  |  |  | 0d |  |
| 68 | 1.2.5.1 | **Recepción** | 11d | 2016-05-05 | 2016-05-19 |  |  |  | 0d |  |
| 69 | 1.2.5.1.1 | Transacción - Orden de compra. | 4d | 2016-05-05 | 2016-05-10 | 66 |  |  | 0d |  |
| 70 | 1.2.5.1.2 | Transacción - Tarea de recepción. | 4d | 2016-05-11 | 2016-05-16 | 69 |  |  | 0d |  |
| 71 | 1.2.5.1.3 | Creación de tarea de recepción para una orden de compra | 3d | 2016-05-17 | 2016-05-19 | 70 |  |  | 0d |  |
| 72 | 1.2.5.2 | Recibo de devoluciones | 3d | 2016-05-20 | 2016-05-24 | 71 |  |  | 0d |  |
| 73 | 1.2.5.3 | Recibo ciego (Sin OC) | 3d | 2016-05-25 | 2016-05-27 | 72 |  |  | 0d |  |
| 74 | 1.2.5.4 | **Opciones de acomodo o ubicación** | 3d | 2016-05-30 | 2016-06-01 |  |  |  | 0d |  |
| 75 | 1.2.5.4.1 | Tarea de ubicación para la HH desde BOF | 3d | 2016-05-30 | 2016-06-01 | 73 |  |  | 0d |  |
| 76 | 1.2.5.5 | Cambios de estado. | 3d | 2016-06-02 | 2016-06-06 | 75 |  |  | 0d |  |
| 77 | 1.2.5.6 | Transacción de pedido de cliente | 5d | 2016-06-07 | 2016-06-13 | 76 |  |  | 0d |  |
| 78 | 1.2.5.7 | Picking | 7d | 2016-06-14 | 2016-06-22 | 77 |  |  | 0d |  |
| 79 | 1.2.5.8 | Verificación de pedidos de cliente. | 3d | 2016-06-23 | 2016-06-27 | 78 |  |  | 0d |  |
| 80 | 1.2.5.9 | Packing | 4d | 2016-06-28 | 2016-07-01 | 79 |  |  | 0d |  |
| 81 | 1.2.5.10 | Despacho | 6d | 2016-07-04 | 2016-07-11 | 80 |  |  | 0d |  |
| 82 | 1.2.5.11 | **Utilerías** | 7d | 2016-07-12 | 2016-07-20 |  |  |  | 0d |  |
| 83 | 1.2.5.11.1 | Impresión de códigos de barra (Viñetas) | 7d | 2016-07-12 | 2016-07-20 | 81 |  |  | 0d |  |
| 84 | 1.2.5.12 | **Reportes actuales de TOM-IMS.** | 10d | 2016-07-21 | 2016-08-03 |  |  |  | 0d |  |
| 85 | 1.2.5.12.1 | Reportes generados de inventario. | 10d | 2016-07-21 | 2016-08-03 | 83 |  |  | 0d |  |

| ID | WBS | Task | Duration | Start | Finish | Predecessors | Complete | Total slack |
| --- | --- | --- | --- | --- | --- | --- | --- | --- |
| 86 | 1.2.5.13 | **Inventarios Cíclicos** | 19d | 2016-08-04 | 2016-08-30 |  |  | 0d |
| 87 | 1.2.5.13.1 | Generación de tareas de conteos en base a diferencias | 3d | 2016-08-04 | 2016-08-08 | 85 |  | 0d |
| 88 | 1.2.5.13.2 | Conteos Cíclicos por RF | 3d | 2016-08-09 | 2016-08-11 | 87 |  | 0d |
| 89 | 1.2.5.13.3 | Inventarios Físicos | 4d | 2016-08-12 | 2016-08-17 | 88 |  | 0d |
| 90 | 1.2.5.13.4 | Conteos dobles. | 5d | 2016-08-18 | 2016-08-24 | 89 |  | 0d |
| 91 | 1.2.5.13.5 | Aplicación del inventario. | 4d | 2016-08-25 | 2016-08-30 | 90 |  | 0d |
| 92 | 1.2.6 | **Mejoras** | 2.75d | 2016-03-11 A | 2016-03-16 A |  | 100% |  |
| 93 | 1.2.6.1 | Importar motivos de anulación desde excel | 2h | 2016-03-11 A | 2016-03-11 A |  | 100% |  |
| 94 | 1.2.6.2 | Importar motivos de devolución desde excel | 2h | 2016-03-11 A | 2016-03-11 A | 93 | 100% |  |
| 95 | 1.2.6.3 | Importar operadores desde excel | 2h | 2016-03-14 A | 2016-03-14 A | 94 | 100% |  |
| 96 | 1.2.6.4 | Importar clasificación_producto desde excel | 2h | 2016-03-14 A | 2016-03-14 A | 95 | 100% |  |
| 97 | 1.2.6.5 | Importar familia_producto desde excel | 2h | 2016-03-14 A | 2016-03-14 A | 96 | 100% |  |
| 98 | 1.2.6.6 | Importar marcas_producto desde excel | 2h | 2016-03-14 A | 2016-03-14 A | 97 | 100% |  |
| 99 | 1.2.6.7 | Importar estados_producto desde excel | 2h | 2016-03-15 A | 2016-03-15 A | 98 | 100% |  |
| 100 | 1.2.6.8 | Importar presentaciones_producto desde excel | 2h | 2016-03-15 A | 2016-03-15 A |  | 100% |  |
| 101 | 1.2.6.9 | Importar unidades_medida desde excel | 2h | 2016-03-15 A | 2016-03-15 A | 100 | 100% |  |
| 102 | 1.2.6.10 | Importar productos desde excel | 2h | 2016-03-16 A | 2016-03-16 A | 101 | 100% |  |
| 103 | 1.3 | **Aplicación Hand Held** | 57d? | 2016-08-31 | 2016-11-17 |  |  | 0d |
| 104 | 1.3.1 | Ingreso | 3d | 2016-08-31 | 2016-09-02 | 91 |  | 0d |
| 105 | 1.3.2 | Menú principal. | 1d | 2016-09-05 | 2016-09-05 | 104 |  | 0d |
| 106 | 1.3.3 | Panel de tareas. | 2d | 2016-09-06 | 2016-09-07 | 105 |  | 0d |
| 107 | 1.3.4 | Proceso de recepción | 3d | 2016-09-08 | 2016-09-12 | 106 |  | 0d |
| 108 | 1.3.5 | Proceso de Picking. | 5d | 2016-09-13 | 2016-09-19 | 107 |  | 0d |
| 109 | 1.3.6 | Proceso de Verificación | 5d | 2016-09-20 | 2016-09-26 | 108 |  | 0d |
| 110 | 1.3.7 | Packing | 5d | 2016-09-27 | 2016-10-03 | 109 |  | 0d |
| 111 | 1.3.8 | Proceso de devolución. | 5d | 2016-10-04 | 2016-10-10 | 110 |  | 0d |
| 112 | 1.3.9 | Proceso de ubicación. | 5d | 2016-10-11 | 2016-10-17 | 111 |  | 0d |
| 113 | 1.3.10 | Proceso de Inventarios | 5d | 2016-10-18 | 2016-10-24 | 112 |  | 0d |
| 114 | 1.3.11 | Verificación de pedidos de cliente. | 5d | 2016-10-25 | 2016-10-31 | 113 |  | 0d |

| ID | WBS | Task | Duration | Start | Finish | Predecessors | Total slack |
| --- | --- | --- | --- | --- | --- | --- | --- |
| 115 | 1.3.12 | **MI3 (Modulo de integración con terceros)** | 13d? | 2016-11-01 | 2016-11-17 |  | 0d |
| 116 | 1.3.12.1 | **Entidades de entrada** | 10d? | 2016-11-01 | 2016-11-14 |  | 0d |
| 117 | 1.3.12.1.1 | Productos | 1d? | 2016-11-01 | 2016-11-01 | 114 | 0d |
| 118 | 1.3.12.1.2 | Unidades de medida | 1d? | 2016-11-02 | 2016-11-02 | 117 | 0d |
| 119 | 1.3.12.1.3 | Estados de producto | 1d? | 2016-11-03 | 2016-11-03 | 118 | 0d |
| 120 | 1.3.12.1.4 | Clientes | 1d? | 2016-11-04 | 2016-11-04 | 119 | 0d |
| 121 | 1.3.12.1.5 | Proveedores | 1d? | 2016-11-07 | 2016-11-07 | 120 | 0d |
| 122 | 1.3.12.1.6 | Órdenes de compra. | 1d? | 2016-11-08 | 2016-11-08 | 121 | 0d |
| 123 | 1.3.12.1.7 | Pedidos de clientes | 1d? | 2016-11-09 | 2016-11-09 | 122 | 0d |
| 124 | 1.3.12.1.8 | Definición de inventarios | 1d? | 2016-11-10 | 2016-11-10 | 123 | 0d |
| 125 | 1.3.12.1.9 | Acomodo | 1d? | 2016-11-11 | 2016-11-11 | 124 | 0d |
| 126 | 1.3.12.1.10 | Rutas | 1d? | 2016-11-14 | 2016-11-14 | 125 | 0d |
| 127 | 1.3.12.2 | **Entidades de salida** | 3d? | 2016-11-15 | 2016-11-17 |  | 0d |
| 128 | 1.3.12.2.1 | Despachos. | 1d? | 2016-11-15 | 2016-11-15 | 126 | 0d |
| 129 | 1.3.12.2.2 | Resultado de Inventarios | 1d? | 2016-11-16 | 2016-11-16 | 128 | 0d |
| 130 | 1.3.12.2.3 | Existencias | 1d? | 2016-11-17 | 2016-11-17 | 129 | 0d |
